# Proyecto - AIR Web

How a schedule from MS Project changed from version to version. A marks actual dates.

## Version 1 (saved 2017-05-10)

Note of the change: Proyecto AirWeb

| ID | WBS | Task | Duration | Start | Finish | Predecessors | Complete | Total float | Constraint |
| --- | --- | --- | --- | --- | --- | --- | --- | --- | --- |
| 1 | 1 | **Eventos y Acciones** | 85d | 2017-03-06 A | 2017-06-30 |  | 5% | 51d |  |
| 2 |  | Relevamiento | 20d | 2017-03-06 A | 2017-03-31 A |  | 100% |  | start no earlier than 2017-03-06 |
| 3 | 1.2 | **Diseño** | 33d | 2017-04-03 | 2017-05-17 | 2 |  | 11d |  |
| 4 | 1.2.1 | **Técnico** | 33d | 2017-04-03 | 2017-05-17 |  |  | 11d |  |
| 5 | 1.2.1.1 | **Datos** | 33d | 2017-04-03 | 2017-05-17 |  |  | 11d |  |
| 6 |  | Maestros | 33d | 2017-04-03 | 2017-05-17 |  |  | 11d | finish no earlier than 2017-05-17 |
| 7 |  | Transaccionales | 33d | 2017-04-03 | 2017-05-17 |  |  | 20d | finish no earlier than 2017-05-17 |
| 8 | 1.2.2 | **Funcional** | 33d | 2017-04-03 | 2017-05-17 |  |  | 20d |  |
| 9 |  | ABMs Datos maestros | 33d | 2017-04-03 | 2017-05-17 |  |  | 20d |  |
| 10 |  | Mantenimiento de Eventos | 33d | 2017-04-03 | 2017-05-17 |  |  | 20d |  |
| 11 |  | Mantenimiento de Acciones | 33d | 2017-04-03 | 2017-05-17 |  |  | 20d |  |
| 12 | 1.3 | **Programación** | 26d | 2017-05-18 | 2017-06-22 |  |  | 0d |  |
| 13 | 1.3.1 | **Datos Maestros** | 15d | 2017-05-18 | 2017-06-07 | 6 |  | 11d |  |
| 14 |  | Usuarios | 10d | 2017-05-18 | 2017-05-31 |  |  | 16d |  |
| 15 |  | Creación automática de usuarios | 10d | 2017-05-18 | 2017-05-31 |  |  | 16d |  |
| 16 |  | Departamentos | 10d | 2017-05-18 | 2017-05-31 |  |  | 16d |  |
| 17 |  | Areas | 15d | 2017-05-18 | 2017-06-07 |  |  | 11d |  |
| 18 |  | Clases | 15d | 2017-05-18 | 2017-06-07 |  |  | 11d |  |
| 19 |  | Estados | 15d | 2017-05-18 | 2017-06-07 |  |  | 11d |  |
| 20 |  | Grupos de Seguimiento | 15d | 2017-05-18 | 2017-06-07 |  |  | 11d |  |
| 21 |  | Motivos | 15d | 2017-05-18 | 2017-06-07 |  |  | 11d |  |
| 22 | 1.3.1.9 | **Orígenes** | 15d | 2017-05-18 | 2017-06-07 |  |  | 11d |  |
| 23 |  | Tipo de Origen | 15d | 2017-05-18 | 2017-06-07 |  |  | 11d |  |
| 24 |  | Partes del Cuerpo | 15d | 2017-05-18 | 2017-06-07 |  |  | 11d |  |
| 25 |  | Prioridades | 15d | 2017-05-18 | 2017-06-07 |  |  | 11d |  |
| 26 |  | Propósitos | 15d | 2017-05-18 | 2017-06-07 |  |  | 11d |  |
| 27 |  | Tipos de Lesión | 15d | 2017-05-18 | 2017-06-07 |  |  | 11d |  |
| 28 |  | Eventos | 10d | 2017-05-26 | 2017-06-08 |  |  | 0d | start no earlier than 2017-05-26 |
| 29 |  | Acciones | 10d | 2017-06-09 | 2017-06-22 | 28 |  | 0d |  |
| 30 |  | Pruebas | 5d | 2017-06-23 | 2017-06-29 | 14, 16, 29 |  | 56d |  |
| 31 |  | Demo | 1d | 2017-06-30 | 2017-06-30 | 30 |  | 56d |  |
| 32 | 2 | **Scheduler** | 41d | 2017-05-18 | 2017-07-13 |  |  | 0d |  |
| 33 |  | Relevamiento | 1d | 2017-05-18 | 2017-05-18 | 3 |  | 20d |  |
| 34 |  | Diseño | 5d | 2017-05-19 | 2017-05-25 | 33 |  | 20d |  |
| 35 |  | Programación | 15d | 2017-06-23 | 2017-07-13 | 34, 12 |  | 0d |  |
| 36 | 3 | **Reportes** | 104d | 2017-03-06 | 2017-07-27 |  |  | 0d |  |
| 37 |  | Relevamiento | 1d | 2017-05-18 | 2017-05-18 | 3 |  | 41d |  |
| 38 |  | Diseño | 5d | 2017-03-06 | 2017-03-10 |  |  | 99d |  |
| 39 | 3.3 | **Programación** | 10d | 2017-07-14 | 2017-07-27 | 35 |  | 0d |  |
| 40 |  | Eventos | 10d | 2017-07-14 | 2017-07-27 |  |  | 0d |  |
| 41 |  | Eventos Sin Acciones | 10d | 2017-07-14 | 2017-07-27 |  |  | 0d |  |
| 42 |  | Eventos Sin Cerrar | 10d | 2017-07-14 | 2017-07-27 |  |  | 0d |  |
| 43 |  | Eventos con todas las acciones Cerradas | 10d | 2017-07-14 | 2017-07-27 |  |  | 0d |  |
| 44 |  | Mis Eventos | 10d | 2017-07-14 | 2017-07-27 |  |  | 0d |  |
| 45 |  | Acciones | 10d | 2017-07-14 | 2017-07-27 |  |  | 0d |  |
| 46 |  | Mis Acciones Pendientes | 10d | 2017-07-14 | 2017-07-27 |  |  | 0d |  |
| 47 | 4 | **JSA** | 21d | 2017-07-28 | 2017-08-25 | 36, 32 |  | 0d |  |
| 48 |  | Relevamiento | 1d | 2017-07-28 | 2017-07-28 | 37 |  | 0d |  |
| 49 |  | Diseño | 5d | 2017-07-31 | 2017-08-04 | 48 |  | 0d |  |
| 50 |  | Programación | 15d | 2017-08-07 | 2017-08-25 | 49 |  | 0d |  |
| 51 |  | Pruebas | 10d | 2017-08-28 | 2017-09-08 | 47 |  | 0d |  |
| 52 |  | Migración de Datos | 5d | 2017-08-28 | 2017-09-01 | 47 |  | 5d |  |
| 53 |  | Capacitación | 1d | 2017-08-28 | 2017-08-28 | 47 |  | 9d |  |
| 54 |  | Implementación | 1d | 2017-09-11 | 2017-09-11 | 53, 51, 52 |  | 0d |  |

## Version 2 (saved 2017-05-10)

Note of the change: Estado del Proyecto

Last finish 2017-09-11 → 2017-09-18 (+7d).

Changed:

| ID | Task | Start | Finish | Duration | Predecessors |
| --- | --- | --- | --- | --- | --- |
| 36 | **Reportes** |  | 2017-07-27 → 2017-08-03 (+7d) | 104d → 109d |  |
| 39 | **Programación** |  | 2017-07-27 → 2017-08-03 (+7d) | 10d → 15d | 35 → 35, 37 |
| 40 | Eventos |  | 2017-07-27 → 2017-08-03 (+7d) | 10d → 15d |  |
| 41 | Eventos Sin Acciones |  | 2017-07-27 → 2017-08-03 (+7d) | 10d → 15d |  |
| 42 | Eventos Sin Cerrar |  | 2017-07-27 → 2017-08-03 (+7d) | 10d → 15d |  |
| 43 | Eventos con todas las acciones Cerradas |  | 2017-07-27 → 2017-08-03 (+7d) | 10d → 15d |  |
| 44 | Mis Eventos |  | 2017-07-27 → 2017-08-03 (+7d) | 10d → 15d |  |
| 45 | Acciones |  | 2017-07-27 → 2017-08-03 (+7d) | 10d → 15d |  |
| 46 | Mis Acciones Pendientes |  | 2017-07-27 → 2017-08-03 (+7d) | 10d → 15d |  |
| 47 | **JSA** | 2017-07-28 → 2017-08-04 (+7d) | 2017-08-25 → 2017-09-01 (+7d) |  |  |
| 48 | Relevamiento | 2017-07-28 → 2017-08-04 (+7d) | 2017-07-28 → 2017-08-04 (+7d) |  |  |
| 49 | Diseño | 2017-07-31 → 2017-08-07 (+7d) | 2017-08-04 → 2017-08-11 (+7d) |  |  |
| 50 | Programación | 2017-08-07 → 2017-08-14 (+7d) | 2017-08-25 → 2017-09-01 (+7d) |  |  |
| 51 | Pruebas | 2017-08-28 → 2017-09-04 (+7d) | 2017-09-08 → 2017-09-15 (+7d) |  |  |
| 52 | Migración de Datos | 2017-08-28 → 2017-09-04 (+7d) | 2017-09-01 → 2017-09-08 (+7d) |  |  |
| 53 | Capacitación | 2017-08-28 → 2017-09-04 (+7d) | 2017-08-28 → 2017-09-04 (+7d) |  |  |
| 54 | Implementación | 2017-09-11 → 2017-09-18 (+7d) | 2017-09-11 → 2017-09-18 (+7d) |  |  |
